# Sidechains_Plan

How a schedule from MS Project changed from version to version. A marks actual dates.

## Version 1 (saved 2018-03-07)

Note of the change: added documentation Imported from Changeset 88

| ID | WBS | Task | Duration | Start | Finish | Predecessors | Complete | Total float |
| --- | --- | --- | --- | --- | --- | --- | --- | --- |
| 1 | 1 | **Create a Blockchain** | 6d | 2018-02-19 A | 2018-02-26 A |  | 100% |  |
| 2 |  | TestNet | 2d | 2018-02-19 A | 2018-02-20 A |  | 100% |  |
| 3 |  | RegTest | 1d | 2018-02-21 A | 2018-02-21 A | 2 | 100% |  |
| 4 |  | MainNet | 3d | 2018-02-22 A | 2018-02-26 A | 3 | 100% |  |
| 5 |  | Mine Blockchain | 3d | 2018-02-27 A | 2018-03-01 A | 1 | 100% |  |
| 6 | 3 | **Create a Sidechain Skeleton** | 3d | 2018-02-27 A | 2018-03-01 A | 1 | 100% |  |
| 7 |  | TestNet | 1d | 2018-02-27 A | 2018-02-27 A | 4 | 100% |  |
| 8 |  | RegTest | 1d | 2018-02-28 A | 2018-02-28 A | 7 | 100% |  |
| 9 |  | MainNet | 1d | 2018-03-01 A | 2018-03-01 A | 8 | 100% |  |
| 10 |  | Mine Sidechain | 3d | 2018-03-02 A | 2018-03-06 A | 6 | 100% |  |
| 11 | 5 | **Other** | 5d | 2018-03-08 | 2018-03-14 |  |  | 0d |
| 12 |  | New Network | 2d | 2018-03-08 | 2018-03-09 |  |  |  |
| 13 |  | Automate Integration Testing | 3d | 2018-03-08 | 2018-03-12 |  |  |  |
| 14 |  | Refactor into One Feature | 3d | 2018-03-12 | 2018-03-14 |  |  |  |
| 15 | 6 | **Blockchain Generation API** | 11d | 2018-02-23 A | 2018-03-09 |  | 81% | 0d |
| 16 |  | API and unit test | 5d | 2018-02-23 A | 2018-03-01 A |  | 100% |  |
| 17 |  | PowerShell Commands | 6d | 2018-03-02 A | 2018-03-09 | 16 | 65% |  |
| 18 | 7 | **Build Packages** | 3d | 2018-03-07 | 2018-03-09 | 1, 5, 6, 10 |  | 0d |
| 19 |  | Windows | 3d | 2018-03-07 | 2018-03-09 | 1, 5, 6, 10 |  |  |
| 20 |  | Linux | 3d | 2018-03-07 | 2018-03-09 | 1, 5, 6, 10 |  |  |
| 21 |  | Mac | 3d | 2018-03-07 | 2018-03-09 | 1, 5, 6, 10 |  |  |
| 22 | 8 | **Wallet UI Support** | 13d | 2018-03-12 | 2018-03-28 | 1, 5, 6, 10, 18 |  | 0d |
| 23 |  | Design | 3d | 2018-03-12 | 2018-03-14 | 1, 5, 6, 10, 18 |  |  |
| 24 |  | Support Dual Currencies | 10d | 2018-03-15 | 2018-03-28 | 23 |  |  |
| 25 |  | Blockchain Generation Complete | 0d | 2018-03-29 | 2018-03-29 | 1, 5, 6, 10, 18, 22 |  |  |
| 26 | 10 | **Customizations** | 18d | 2018-03-29 | 2018-04-23 |  |  | 0d |
| 27 |  | Consensus Rules | 5d | 2018-03-29 | 2018-04-04 | 25 |  |  |
| 28 |  | Other | 13d | 2018-04-05 | 2018-04-23 | 27 |  |  |
| 29 | 11 | **Sidechains** | 38d | 2018-03-02 A | 2018-04-25 |  | 2% | 0d |
| 30 |  | Sidechains Framework | 30d | 2018-03-02 A | 2018-04-12 | 6 | 5% |  |
| 31 |  | Fund a Sidechain | 8d | 2018-03-02 A | 2018-03-13 | 6 | 20% |  |
| 32 |  | Receive Funds | 18d | 2018-03-02 | 2018-03-27 | 6 |  |  |
| 33 |  | Mint Coins | 24d | 2018-03-02 | 2018-04-04 | 6 |  |  |
| 34 |  | Transfer Out of Chain | 30d | 2018-03-02 | 2018-04-12 | 6 |  |  |
| 35 |  | Transfer into Mainchain | 37d | 2018-03-02 | 2018-04-23 | 6 |  |  |
| 36 |  | Sidechains Phase 1 Complete | 0d | 2018-04-25 | 2018-04-25 | 30, 31, 32, 33, 34, 35 |  |  |

## Version 2 (saved 2018-03-20)

Note of the change: Updated Requirements and Project Documents. After console app dev. Imported from Changeset 125

Last finish stays 2018-04-25. Complete tasks 9 → 13.

Changed:

| ID | Task | Start | Finish | Complete | Total float | Other |
| --- | --- | --- | --- | --- | --- | --- |
| 11 | **Other** | 2018-03-08 A | 2018-03-14 A | 0% → 100% | 0d → none |  |
| 12 | New Network | 2018-03-08 A | 2018-03-09 A | 0% → 100% |  |  |
| 13 | Automate Integration Testing | 2018-03-08 A | 2018-03-12 A | 0% → 100% |  |  |
| 14 | Refactor into One Feature | 2018-03-12 A | 2018-03-14 A | 0% → 100% |  | resources Matt → Matt; Carlton |
| 15 | **Blockchain Generation API** |  |  | 81% → 95% |  |  |
| 17 | PowerShell Commands |  |  | 65% → 90% |  |  |
| 22 | **Wallet UI Support** | 2018-03-12 A |  | 0% → 54% |  |  |
| 23 | Design | 2018-03-12 A | 2018-03-14 A | 0% → 100% |  |  |
| 24 | Support Dual Currencies | 2018-03-15 A |  | 0% → 40% |  |  |
| 29 | **Sidechains** |  |  | 2% → 14% |  |  |
| 30 | Sidechains Framework |  |  | 5% → 35% |  |  |
| 31 | Fund a Sidechain |  |  | 20% → 40% |  |  |
| 32 | Receive Funds | 2018-03-02 A |  | 0% → 35% |  |  |
